# DANA - Assessment - week 24

How a schedule from MS Project changed from version to version. A marks actual dates.

## Version 1 (data date 2019-09-19, saved 2019-10-21, file _projeto.mpp)

| ID | WBS | Task | Duration | Start | Finish | Predecessors | Complete | Total float | Constraint |
| --- | --- | --- | --- | --- | --- | --- | --- | --- | --- |
| 1 | 1 | **Dana TMP - Gravataí** | 81d | 2019-08-29 A | 2019-12-20 |  | 9% | 0d |  |
| 2 | 1.1 | **Iniciação** | 1d | 2019-08-29 A | 2019-08-29 A |  | 100% |  |  |
| 3 |  | Agendar Kickoff externo | 1d | 2019-08-29 A | 2019-08-29 A |  | 100% |  | start no earlier than 2019-08-29 |
| 4 |  | Kick-off realizado | 0d | 2019-08-29 A | 2019-08-29 A | 3 | 100% |  |  |
| 5 | 1.2 | **Planejamento** | 28d | 2019-08-30 A | 2019-10-08 |  | 28% | 52d |  |
| 6 |  | Realizar planejamento das atividades com cliente | 3d | 2019-08-30 A | 2019-09-03 A | 4 | 100% |  |  |
| 7 | 1.2.2 | **HLD (High Level Design)** | 22d | 2019-09-04 A | 2019-10-03 |  | 39% | 55d |  |
| 8 | 1.2.2.1 | **TELEFONIA** | 15d | 2019-09-04 A | 2019-09-24 |  | 40% | 0d |  |
| 9 |  | Elaborar o HLD de TELEFONIA | 3d | 2019-09-04 A | 2019-09-06 A | 6 | 100% |  |  |
| 10 |  | Enviar HLD TELEFONIA para aprovação | 12d | 2019-09-09 A | 2019-09-24 | 9 | 25% | 0d |  |
| 11 |  | HLD TELEFONIA aprovado | 0d | 2019-09-24 | 2019-09-24 | 10 |  | 0d |  |
| 12 | 1.2.2.2 | **LAN** | 9d | 2019-09-12 A | 2019-09-24 |  | 67% | 39.12d |  |
| 13 |  | Elaborar o HLD de LAN | 5d | 2019-09-12 A | 2019-09-18 A | 11 | 100% |  |  |
| 14 |  | Enviar para aprovação | 4d | 2019-09-19 A | 2019-09-24 | 13 | 25% | 39.12d |  |
| 15 |  | HLD LAN aprovado | 0d | 2019-09-24 | 2019-09-24 | 14 |  | 39.12d |  |
| 16 | 1.2.2.3 | **WLAN** | 7d | 2019-09-25 | 2019-10-03 |  |  | 55d |  |
| 17 |  | Elaborar o HLD de WLAN | 5d | 2019-09-25 | 2019-10-01 | 14 |  | 55d |  |
| 18 |  | Enviar para aprovação | 2d | 2019-10-02 | 2019-10-03 | 17 |  | 55d |  |
| 19 |  | HLD LAN aprovado | 0d | 2019-10-03 | 2019-10-03 | 18 |  | 55d |  |
| 20 | 1.2.3 | **NIP (Networking Implementation Plan)** | 10d | 2019-09-25 | 2019-10-08 |  |  | 0d |  |
| 21 | 1.2.3.1 | **LAN** | 7d | 2019-09-25 | 2019-10-03 |  |  | 39.12d |  |
| 22 |  | Elaborar o NIP de LAN | 5d | 2019-09-25 | 2019-10-01 | 15 |  | 39.12d |  |
| 23 |  | Enviar NIP LAN para aprovação | 2d | 2019-10-02 | 2019-10-03 | 22 |  | 55d |  |
| 24 |  | NIP LAN aprovado | 0d | 2019-10-03 | 2019-10-03 | 23 |  | 55d |  |
| 25 | 1.2.3.2 | **TELEFONIA** | 7d | 2019-09-25 | 2019-10-03 |  |  | 0d |  |
| 26 |  | Elaborar o NIP de TELEFONIA | 5d | 2019-09-25 | 2019-10-01 | 11 |  | 0d | start no earlier than 2019-09-23 |
| 27 |  | Enviar NIP TELEFONIA para aprovação | 2d | 2019-10-02 | 2019-10-03 | 26 |  | 0d |  |
| 28 |  | NIP TELEFONIA aprovado | 0d | 2019-10-03 | 2019-10-03 | 27 |  | 0d |  |
| 29 | 1.2.3.3 | **WLAN** | 5d | 2019-10-02 | 2019-10-08 |  |  | 39.12d |  |
| 30 |  | Elaborar o NIP de WLAN | 3d | 2019-10-02 | 2019-10-04 | 22 |  | 39.12d |  |
| 31 |  | Enviar NIP WLAN para aprovação | 2d | 2019-10-07 | 2019-10-08 | 30 |  | 39.12d |  |
| 32 |  | NIP WLAN aprovado | 0d | 2019-10-08 | 2019-10-08 | 31 |  | 39.12d |  |
| 33 | 1.3 | **Migração** | 25.88d | 2019-10-02 | 2019-11-06 |  |  | 1.88d |  |
| 34 |  | Equipamentos LAN entregues | 0d | 2019-10-02 | 2019-10-02 |  |  | 18.88d | start no earlier than 2019-10-02 |
| 35 |  | Equipamentos WLAN entregues | 0d | 2019-10-02 | 2019-10-02 |  |  | 44d | start no earlier than 2019-10-02 |
| 36 |  | Equipamentos TELEFONIA entregues | 0d | 2019-10-02 | 2019-10-02 |  |  | 56.88d | start no earlier than 2019-10-02 |
| 37 | 1.3.4 | **LAN** | 22.88d | 2019-10-02 | 2019-11-03 |  |  | 18.88d |  |
| 38 |  | Realizar Staging dos SWs | 7d | 2019-10-02 | 2019-10-11 | 34 |  | 18.88d |  |
| 39 |  | STAGING SWs realizados | 0d | 2019-10-11 | 2019-10-11 | 38 |  | 18.88d |  |
| 40 |  | Elaborar GMUD LAN | 3d | 2019-10-04 | 2019-10-09 | 39FS-5d |  | 18.88d |  |
| 41 |  | Enviar GMUD LAN para aprovação | 2d | 2019-10-09 | 2019-10-11 | 40 |  | 18.88d |  |
| 42 |  | GMUD LAN aprovado | 0d | 2019-10-11 | 2019-10-11 | 41 |  | 18.88d |  |
| 43 | 1.3.4.6 | **Instalação de 01 módulo SFP para unificação/redundância dos comutadores e padronização lógica (Qualquer horário)** | 11d | 2019-10-11 | 2019-10-28 |  |  | 38.88d |  |
| 44 |  | Rack Monitoramento | 1d | 2019-10-11 | 2019-10-14 | 42 |  | 47.88d |  |
| 45 |  | SGA53 – ETEI | 1d | 2019-10-11 | 2019-10-14 | 44SS |  | 47.88d |  |
| 46 |  | PTG43 – Sala Reunião | 1d | 2019-10-11 | 2019-10-14 | 45SS |  | 47.88d |  |
| 47 |  | PTG42 – Almoxarifado | 1d | 2019-10-11 | 2019-10-14 | 46SS |  | 47.88d |  |
| 48 |  | DFR52 – Refeitório | 1d | 2019-10-11 | 2019-10-14 | 47SS |  | 47.88d |  |
| 49 |  | DFR51 – Exp. Final | 1d | 2019-10-11 | 2019-10-14 | 48SS |  | 47.88d |  |
| 50 |  | DFR49 - Martelos | 1d | 2019-10-22 | 2019-10-23 | 49 |  | 41.88d | start no earlier than 2019-10-22 |
| 51 |  | ADM08 – Portaria Nova | 1d | 2019-10-22 | 2019-10-23 | 50SS |  | 41.88d |  |
| 52 |  | SBC13 – Auditório | 1d | 2019-10-22 | 2019-10-23 | 51SS |  | 41.88d |  |
| 53 |  | SBC14 – Preset | 1d | 2019-10-22 | 2019-10-23 | 52SS |  | 41.88d |  |
| 54 |  | SBC15 – Preset Calibres | 1d | 2019-10-22 | 2019-10-23 | 53SS |  | 41.88d |  |
| 55 |  | SBC17 – Reforma | 1d | 2019-10-22 | 2019-10-23 | 54SS |  | 41.88d |  |
| 56 |  | SBC20 – Lab. Metalúrgico | 1d | 2019-10-23 | 2019-10-24 | 55SS |  | 40.88d | start no earlier than 2019-10-23 |
| 57 |  | SBC23 – Terminal | 1d | 2019-10-23 | 2019-10-24 | 56SS |  | 40.88d |  |
| 58 |  | SBC24 – Garfos e Flange | 1d | 2019-10-23 | 2019-10-24 | 57SS |  | 40.88d |  |
| 59 |  | SBC25 – Ponteira | 1d | 2019-10-23 | 2019-10-24 | 58SS |  | 40.88d |  |
| 60 |  | SBC27 – Finalíssima | 1d | 2019-10-23 | 2019-10-24 | 59SS |  | 40.88d |  |
| 61 |  | DFA05 – Auditório | 1d | 2019-10-23 | 2019-10-24 | 60SS |  | 40.88d |  |
| 62 |  | DFR48 - Manutenção | 1d | 2019-10-24 | 2019-10-25 | 61SS |  | 39.88d | start no earlier than 2019-10-24 |
| 63 |  | PTG34 – Auditório PTG | 1d | 2019-10-24 | 2019-10-25 | 62SS |  | 39.88d |  |
| 64 |  | PTG35 – PCP/Comp. | 1d | 2019-10-24 | 2019-10-25 | 63SS |  | 39.88d |  |
| 65 |  | PTG36 – Lab. Motores | 1d | 2019-10-24 | 2019-10-25 | 64SS |  | 39.88d |  |
| 66 |  | PTG44 – Manutenção | 1d | 2019-10-24 | 2019-10-25 | 65SS |  | 39.88d |  |
| 67 |  | ADM02 – SAM | 1d | 2019-10-24 | 2019-10-25 | 66SS |  | 39.88d |  |
| 68 |  | GNS54 – Ginásio | 1d | 2019-10-25 | 2019-10-28 | 67SS |  | 38.88d | start no earlier than 2019-10-25 |
| 69 | 1.3.4.6.26 | **MTZ46 – Melhorias** | 0.2d | 2019-10-25 | 2019-10-25 |  |  | 39.67d |  |
| 70 |  | Instalar 02 módulos SFP para unificação/redundância dos comutadores e padronização lógica. | 0.2d | 2019-10-25 | 2019-10-25 | 68SS |  | 39.67d |  |

| ID | WBS | Task | Duration | Start | Finish | Predecessors | Total float | Constraint |
| --- | --- | --- | --- | --- | --- | --- | --- | --- |
| 71 |  | MTZ47 – Sala Qualidade instalado | 0d | 2019-10-25 | 2019-10-25 | 70 | 39.67d |  |
| 72 | 1.3.4.7 | **Atividades após o horário comercial** | 2.88d | 2019-10-15 | 2019-10-17 |  | 45d |  |
| 73 | 1.3.4.7.1 | **DFA04 – Compras** | 0.88d | 2019-10-15 | 2019-10-15 |  | 45d |  |
| 74 |  | Substituir WS-2960X-48FPS-L por 02x WS-2960X-24PS-L. Instalação de 02 módulos stack e 01 módulo SFP para unificação/redundância dos comutadores e padronização lógica; | 1d | 2019-10-15 | 2019-10-15 | 95 | 193.88d | start no earlier than 2019-10-15 |
| 75 | 1.3.4.7.2 | **DFA03 – Refeitório** | 0.88d | 2019-10-15 | 2019-10-15 |  | 47d |  |
| 76 |  | Substituir o WS-2960-24TC-S p/ WS-2960X-24PS-L e organização lógica; | 1d | 2019-10-15 | 2019-10-15 | 74SS | 198d |  |
| 77 | 1.3.4.7.3 | **DFA07 – DTI*** | 1d | 2019-10-16 | 2019-10-16 |  | 45d |  |
| 78 |  | Instalar 02 módulos stack e 01 módulo SFP para unificação/redundância dos comutadores e padronização lógica; | 1d | 2019-10-16 | 2019-10-16 | 74 | 45d |  |
| 79 | 1.3.4.7.4 | **DFA06 – Diretoria** | 1d | 2019-10-16 | 2019-10-16 |  | 45d |  |
| 80 |  | Instalar 02 módulos stack e 01 módulo SFP para unificação/redundância dos comutadores e padronização lógica; | 1d | 2019-10-16 | 2019-10-16 | 78SS | 45d |  |
| 81 | 1.3.4.7.5 | **PTG40 – Eng. Processo** | 1d | 2019-10-16 | 2019-10-16 |  | 45d |  |
| 82 |  | Instalar de 02 módulos stack e 01 módulo SFP para unificação/redundância dos comutadores e padronização lógica; | 1d | 2019-10-16 | 2019-10-16 | 80SS | 45d |  |
| 83 | 1.3.4.7.6 | **PTG32 – Eng. Produtos** | 1d | 2019-10-17 | 2019-10-17 |  | 45d |  |
| 84 |  | Instalar de 02 módulos stack e 01 módulo SFP para unificação/redundância dos comutadores e padronização lógica; | 1d | 2019-10-17 | 2019-10-17 | 82 | 45d |  |
| 85 | 1.3.4.7.7 | **NKG30 – Sala de Reunião** | 1d | 2019-10-17 | 2019-10-17 |  | 45d |  |
| 86 |  | Instalar 01 Instalação switch WS-2960X-24PS-L para atender densidades de portas locais. Instalação de 02 módulos stack e 01 módulo SFP para unificação/redundância dos comutadores e padronização lógica. Remanejamento do Up Link do rack para o Core | 1d | 2019-10-17 | 2019-10-17 | 84SS | 45d |  |
| 87 | 1.3.4.7.8 | **MTZ47 – Sala Qualidade** | 1d | 2019-10-17 | 2019-10-17 |  | 45d |  |
| 88 |  | Substituir WS-2960X-48FPS-L por 02x WS-2960X-24PS-L. Instalação de 02 módulos stack e 01 módulo SFP para unificação/redundância dos comutadores e padronização lógica; | 1d | 2019-10-17 | 2019-10-17 | 86SS | 45d |  |
| 89 | 1.3.4.8 | **Atividades aos Domingos** | 15d | 2019-10-13 | 2019-11-03 |  | 18d |  |
| 90 | 1.3.4.8.1 | **Data Center** | 0d | 2019-10-13 | 2019-10-13 |  | 18d |  |
| 91 |  | Instalar 02x WS-3850-24S-S sendo uma delas para substituição de 01 unidade, já existente, do modelo WS-3850-12S. Instalar 21x módulos SFP para unificação/redundância dos comutadores e padronização lógica; | 1d | 2019-10-13 | 2019-10-13 | 42 | 74.88d | start no earlier than 2019-10-13 |
| 92 |  | Data Center instalado | 0d | 2019-10-13 | 2019-10-13 | 91SS | 18d |  |
| 93 | 1.3.4.8.2 | **ADM01 – PABX** | 0d | 2019-10-13 | 2019-10-13 |  | 47d |  |
| 94 |  | Instalar 02 módulos stack para unificação/redundância dos comutadores e padronização lógica; | 1d | 2019-10-13 | 2019-10-13 | 91SS | 199.88d |  |
| 95 |  | ADM01 – PABX instalado | 0d | 2019-10-13 | 2019-10-13 | 94SS | 47d |  |
| 96 | 1.3.4.8.3 | **PTG39 – Reunião Eng.** | 0d | 2019-10-20 | 2019-10-20 |  | 13d |  |
| 97 |  | Instala 02x WS-C3850-12S. Instalar 01x WS-2960X-24PS-L substituindo 01 WS-2960-24TC-S. Instalar 02 módulos stack linha 3800 e instalar 02 módulos stack linha 2900. Instalação de 13 módulos SFP | 1d | 2019-10-20 | 2019-10-20 | 92SS | 53.88d | start no earlier than 2019-10-20 |
| 98 |  | PTG39 – Reunião Eng. Instalado | 0d | 2019-10-20 | 2019-10-20 | 97SS | 13d |  |
| 99 | 1.3.4.8.4 | **PTG41 – Fábrica** | 0d | 2019-10-20 | 2019-10-20 |  | 13d |  |
| 100 |  | Substituir 01 switch 3Com por 01 unidade do WS-2960X-24PS-L. Instalar 02 módulos stack e 01 módulo SFP para unificação/redundância dos comutadores e padronização lógica; | 1d | 2019-10-20 | 2019-10-20 | 98SS | 53.88d |  |
| 101 |  | PTG41 – Fábrica instalado | 0d | 2019-10-20 | 2019-10-20 | 100SS | 44d |  |
| 102 | 1.3.4.8.5 | **SOH45 – Eng. Produto** | 0d | 2019-10-20 | 2019-10-20 |  | 13d |  |
| 103 |  | Instalar 02x WS-C3850-12S. Instalar 01x WS-2960X-24PS-L substituindo 01 switch WS-2960-24TS-S. Instalar 02 módulos stack linha 3800 e 02 módulos stack linha 2900. Instalação de 05 módulos SFP | 1d | 2019-10-20 | 2019-10-20 | 100SS | 53.88d |  |
| 104 |  | SOH45 – Eng. Produto instalado | 0d | 2019-10-20 | 2019-10-20 | 103SS | 13d |  |
| 105 | 1.3.4.8.6 | **DFR50 Komatzu** | 0d | 2019-10-20 | 2019-10-20 |  | 13d |  |
| 106 |  | Instalar 01x WS-2960X-24PS-L, vindo do rack SOH45, para substituir 01 switch SG-300-28. Instalar 01 módulo SFP para unificação/redundância dos comutadores e padronização lógica; | 1d | 2019-10-20 | 2019-10-20 | 104SS | 53.88d |  |
| 107 |  | DFR50 Komatzu instalado | 0d | 2019-10-20 | 2019-10-20 | 106SS | 13d |  |
| 108 | 1.3.4.8.7 | **SCB11 – Show Room** | 0d | 2019-10-27 | 2019-10-27 |  | 8d |  |
| 109 |  | Instalar 01x WS-C3850-12S. Instalar 01 módulo de fibra C3850-NM-4-1GB. Instalar 02 módulos stack linha 3800 e instalação 02 módulos stack linha 2900.Instalar 19 módulos SFP para redundância do ambiente e organização lógica; | 1d | 2019-10-27 | 2019-10-27 | 107SS | 32.88d | start no earlier than 2019-10-27 |
| 110 |  | SCB11 – Show Room instalado | 0d | 2019-10-27 | 2019-10-27 | 109SS | 8d |  |
| 111 | 1.3.4.8.8 | **SBC21 – Seg. industrial** | 0d | 2019-10-27 | 2019-10-27 |  | 8d |  |
| 112 |  | Instalar 02 módulos stack e 02 módulos SFP para unificação/redundância dos comutadores e padronização lógica. Remanejamento do Up Link do rack SBC27, sendo essa localidade um dos pontos de distribuição da rede; | 1d | 2019-10-27 | 2019-10-27 | 110SS | 32.88d |  |
| 113 |  | SBC21 – Seg. industrial instalado | 0d | 2019-10-27 | 2019-10-27 | 112SS | 8d |  |
| 114 | 1.3.4.8.9 | **SBC28 – U.M. Deslizantes** | 0d | 2019-10-27 | 2019-10-27 |  | 8d |  |
| 115 |  | Substituir 01x WS-2960X-48FPS-L por 02 unidades do WS-2960X-24PS-L. Instalar 02 módulos stack e 01 módulo SFP para unificação/redundância dos comutadores e padronização lógica; | 1d | 2019-10-27 | 2019-10-27 | 113SS | 32.88d |  |
| 116 |  | SBC28 – U.M. Deslizantes instalado | 0d | 2019-10-27 | 2019-10-27 | 115SS | 32.88d |  |
| 117 | 1.3.4.8.10 | **SBC18 – Mezanino** | 0d | 2019-11-03 | 2019-11-03 |  | 3d |  |
| 118 |  | Instalar 02 módulos stack e 01 módulo SFP para unificação/redundância dos comutadores e padronização lógica; | 1d | 2019-11-03 | 2019-11-03 | 116SS | 11.88d | start no earlier than 2019-11-03 |
| 119 |  | SBC18 – Mezanino instalado | 0d | 2019-11-03 | 2019-11-03 | 118SS | 3d |  |
| 120 | 1.3.4.8.11 | **SBC19 – Eng. Processos** | 0d | 2019-11-03 | 2019-11-03 |  | 3d |  |
| 121 |  | Instalar 02 módulos stack e 01 módulo SFP para unificação/redundância dos comutadores e padronização lógica; | 1d | 2019-11-03 | 2019-11-03 | 119SS | 11.88d |  |
| 122 |  | SBC19 – Eng. Processos instalado | 0d | 2019-11-03 | 2019-11-03 | 121SS | 3d |  |
| 123 |  | Migração LAN realizada | 0d | 2019-11-03 | 2019-11-03 | 122 | 3d |  |
| 124 | 1.3.5 | **WLAN** | 13d | 2019-10-09 | 2019-10-27 |  | 39d |  |
| 125 |  | Realizar Staging dos Aps | 4d | 2019-10-09 | 2019-10-14 | 32, 35 | 39.12d |  |
| 126 |  | STAGING APs realizado | 0d | 2019-10-14 | 2019-10-14 | 125 | 39.12d |  |
| 127 |  | Entregar Aps para equipe de INFRA instalar | 1d | 2019-10-15 | 2019-10-15 | 126 | 39.12d |  |
| 128 |  | Elaborar GMUD WLAN | 5d | 2019-10-16 | 2019-10-22 | 127 | 39.12d |  |
| 129 |  | Enviar GMUD WLAN para aprovação | 2d | 2019-10-23 | 2019-10-24 | 128 | 39.12d |  |
| 130 |  | GMUD WLAN aprovado | 0d | 2019-10-24 | 2019-10-24 | 129 | 39.12d |  |
| 131 |  | Realizar a atualização da WLC | 1d | 2019-10-27 | 2019-10-27 | 130 | 162d | start no earlier than 2019-10-27 |
| 132 |  | Atualização WLC realizada | 0d | 2019-10-27 | 2019-10-27 | 131 | 39d |  |
| 133 | 1.3.6 | **TELEFONIA** | 24d | 2019-10-04 | 2019-11-06 |  | 0d |  |
| 134 |  | Realizar o Staging de TELEFONIA | 2d | 2019-10-04 | 2019-10-07 | 28 | 0d |  |
| 135 |  | STAGING GW realizados | 0d | 2019-10-07 | 2019-10-07 | 134 | 0d |  |
| 136 |  | Elaborar GMUD TELEFONIA | 5d | 2019-10-08 | 2019-10-14 | 135 | 0d |  |
| 137 |  | Enviar GMUD TELEFONIA para aprovação | 2d | 2019-10-15 | 2019-10-16 | 136 | 0d |  |
| 138 |  | GMUD TELEFONIA aprovado | 0d | 2019-10-16 | 2019-10-16 | 137 | 0d |  |
| 139 |  | Realizar a migração TELEFONIA | 15d | 2019-10-17 | 2019-11-06 | 138 | 0d |  |
| 140 |  | Migração TELEFONIA realizada | 0d | 2019-11-06 | 2019-11-06 | 139 | 0d |  |

| ID | WBS | Task | Duration | Start | Finish | Predecessors | Total float | Constraint |
| --- | --- | --- | --- | --- | --- | --- | --- | --- |
| 141 | 1.4 | **Documentação** | 12d | 2019-11-04 | 2019-11-20 |  | 3d |  |
| 142 | 1.4.1 | **TELEFONIA** | 9d | 2019-11-07 | 2019-11-20 |  | 0d |  |
| 143 |  | Preparar o AS-BUILT TELEFONIA | 5d | 2019-11-07 | 2019-11-13 | 140 | 0d |  |
| 144 |  | Enviar o AS-BUILT TELEFONIA para aprovação | 2d | 2019-11-14 | 2019-11-18 | 143 | 0d |  |
| 145 |  | AS-BUILT TELEFONIA aprovado | 0d | 2019-11-18 | 2019-11-18 | 144 | 0d |  |
| 146 |  | Traduzir AS-BUILT TELEFONIA para inglês | 2d | 2019-11-19 | 2019-11-20 | 145 | 22d |  |
| 147 |  | AS-BUILT inglês aprovado | 0d | 2019-11-20 | 2019-11-20 | 146 | 22d |  |
| 148 | 1.4.2 | **LAN** | 6d | 2019-11-04 | 2019-11-11 |  | 3d |  |
| 149 |  | Preparar o AS-BUILT LAN | 3d | 2019-11-04 | 2019-11-06 | 123 | 3d |  |
| 150 |  | Enviar AS-BUILT LAN | 1d | 2019-11-07 | 2019-11-07 | 149 | 6d |  |
| 151 |  | AS-BUILT LAN aprovado | 0d | 2019-11-07 | 2019-11-07 | 150 | 6d |  |
| 152 |  | Traduzir o AS-BUILT para inglês | 2d | 2019-11-08 | 2019-11-11 | 151 | 28d |  |
| 153 |  | AS-BUILT LAN inglês aprovado | 0d | 2019-11-11 | 2019-11-11 | 152 | 28d |  |
| 154 | 1.4.3 | **WLAN** | 6d | 2019-11-07 | 2019-11-14 |  | 3d |  |
| 155 |  | Preparar o AS-BUILT WLAN | 3d | 2019-11-07 | 2019-11-11 | 149 | 3d |  |
| 156 |  | Enviar AS-BUILT WLAN | 1d | 2019-11-12 | 2019-11-12 | 155 | 3d |  |
| 157 |  | AS-BUILT WLAN aprovado | 0d | 2019-11-12 | 2019-11-12 | 156 | 3d |  |
| 158 |  | Traduzir o AS-BUILT WLAN para inglês | 2d | 2019-11-13 | 2019-11-14 | 157 | 25d |  |
| 159 |  | AS-BUILT WLAN inglês aprovado | 0d | 2019-11-14 | 2019-11-14 | 158 | 25d |  |
| 160 |  | Documentação finalizada | 0d | 2019-11-20 | 2019-11-20 | 147, 159, 153 | 22d |  |
| 161 | 1.5 | **Encerramento do Projeto** | 24d | 2019-11-19 | 2019-12-20 |  | 0d |  |
| 162 |  | Enviar Termo de Aceite final | 1d | 2019-11-19 | 2019-11-19 | 145, 151, 157 | 0d |  |
| 163 |  | Aprovar Termo de Aceite Final | 0.5d | 2019-11-20 | 2019-11-20 | 162 | 0d |  |
| 164 |  | Termo de aceite entregue e aceito | 0d | 2019-11-20 | 2019-11-20 | 163 | 0d |  |
| 165 |  | Faturar o Projeto | 0.5d | 2019-11-20 | 2019-11-20 | 164SS | 0d | start no earlier than 2019-11-20 |
| 166 |  | Projeto faturado | 0d | 2019-11-20 | 2019-11-20 | 165 | 0d |  |
| 167 |  | Projeto TMP encerrado | 0d | 2019-11-20 | 2019-11-20 | 166 | 22d |  |
| 168 |  | Pagamento realizado | 0d | 2019-12-20 | 2019-12-20 | 166FS+30ed | 0d |  |

## Version 2 (data date 2019-11-13, saved 2020-03-05, file projeto.mpp)

Last finish 2019-12-20 → 2019-12-22 (+2d). Complete tasks 5 → 66.

Added:

| ID | Task | Duration | Start | Finish | Predecessors | Constraint |
| --- | --- | --- | --- | --- | --- | --- |
| 75 | DFA03 – Refeitório migrado | 0d | 2019-10-29 A | 2019-10-29 A | 74SS |  |
| 78 | DFA04 – Compras migrado | 0d | 2019-10-29 A | 2019-10-29 A | 77SS |  |
| 81 | DFA07 – DTI* instalado | 0d | 2019-10-29 A | 2019-10-29 A | 80SS |  |
| 84 | PTG40 – Eng. Processo instalado | 0d | 2019-10-30 A | 2019-10-30 A | 83SS |  |
| 87 | DFA06 – Diretoria migrado | 0d | 2019-10-30 A | 2019-10-30 A | 86SS |  |
| 90 | PTG32 – Eng. Produtos instalado | 0d | 2019-10-31 A | 2019-10-31 A | 89SS |  |
| 96 | NKG30 – Sala de Reunião migrado | 0d | 2019-10-31 A | 2019-10-31 A | 95SS |  |
| 101 | Instalar 21x módulos SFP para unificação/redundância dos comutadores. | 0d | 2019-10-23 | 2019-10-23 | 100 | start no earlier than 2019-10-23 |
| 105 | Instalação de 13 módulos SFP | 0d | 2019-10-20 A | 2019-10-20 A | 103 |  |
| 111 | MTZ47 – Sala Qualidade migrado | 0d | 2019-10-27 A | 2019-10-27 A | 110 |  |

Changed:

| ID | Task | Start | Finish | Duration | Complete | Total float | Predecessors | Other |
| --- | --- | --- | --- | --- | --- | --- | --- | --- |
| 1 | **Dana TMP - Gravataí** |  | 2019-12-20 → 2019-12-22 (+2d) |  | 9% → 57% |  |  | resources none → Robson; baseline finish 2020-01-09 → 2019-12-22 |
| 2 | **Iniciação** |  |  |  |  |  |  | resources none → Fabiana Vieira; baseline start none → 2019-08-29; baseline finish none → 2019-08-29 |
| 5 | **Planejamento** |  | 2019-10-08 → 2019-11-04 (+27d) | 28d → 46.12d | 28% → 92% | 52d → 31.75d |  | resources none → Silva; Prado; *Pedro; baseline finish 2019-09-03 → 2019-11-04 |
| 7 | **HLD (High Level Design)** |  | 2019-10-03 A |  | 39% → 100% | 55d → none |  | baseline finish 2019-09-30 → 2019-10-03 |
| 8 | **TELEFONIA** |  | 2019-09-24 A |  | 40% → 100% | 0d → none |  | baseline finish 2019-09-11 → 2019-09-24 |
| 9 | Elaborar o HLD de TELEFONIA |  |  |  |  |  |  | resources none → MAgno; Prado |
| 10 | Enviar HLD TELEFONIA para aprovação |  | 2019-09-24 A |  | 25% → 100% | 0d → none |  | baseline finish 2019-09-11 → 2019-09-24 |
| 11 | HLD TELEFONIA aprovado | 2019-09-24 A | 2019-09-24 A |  | 0% → 100% | 0d → none |  | baseline start 2019-09-11 → 2019-09-24; baseline finish 2019-09-11 → 2019-09-24 |
| 12 | **LAN** |  | 2019-09-24 A |  | 67% → 100% | 39.12d → none |  | baseline finish 2019-09-19 → 2019-09-24 |
| 14 | Enviar para aprovação |  | 2019-09-24 A |  | 25% → 100% | 39.12d → none |  | baseline finish 2019-09-19 → 2019-09-24 |
| 15 | HLD LAN aprovado | 2019-09-24 A | 2019-09-24 A |  | 0% → 100% | 39.12d → none |  | baseline start 2019-09-19 → 2019-09-24; baseline finish 2019-09-19 → 2019-09-24 |
| 16 | **WLAN** | 2019-09-25 A | 2019-10-03 A |  | 0% → 100% | 55d → none |  | baseline start 2019-09-20 → 2019-09-25; baseline finish 2019-09-30 → 2019-10-03 |
| 17 | Elaborar o HLD de WLAN | 2019-09-25 A | 2019-10-01 A |  | 0% → 100% | 55d → none |  | baseline start 2019-09-20 → 2019-09-25; baseline finish 2019-09-26 → 2019-10-01 |
| 18 | Enviar para aprovação | 2019-10-02 A | 2019-10-03 A |  | 0% → 100% | 55d → none |  | baseline start 2019-09-27 → 2019-10-02; baseline finish 2019-09-30 → 2019-10-03 |
| 19 | HLD LAN aprovado | 2019-10-03 A | 2019-10-03 A |  | 0% → 100% | 55d → none |  | baseline start 2019-09-30 → 2019-10-03; baseline finish 2019-09-30 → 2019-10-03 |
| 20 | **NIP (Networking Implementation Plan)** | 2019-09-25 A | 2019-10-08 → 2019-11-04 (+27d) | 10d → 28.12d | 0% → 78% | 0d → 31.75d |  | baseline start 2019-09-20 → 2019-09-25; baseline finish 2019-10-03 → 2019-11-04 |
| 21 | **LAN** | 2019-09-25 A | 2019-10-03 A |  | 0% → 100% | 39.12d → none |  | baseline start 2019-09-20 → 2019-09-25; baseline finish 2019-09-30 → 2019-10-03 |
| 22 | Elaborar o NIP de LAN | 2019-09-25 A | 2019-10-01 A |  | 0% → 100% | 39.12d → none |  | baseline start 2019-09-20 → 2019-09-25; baseline finish 2019-09-26 → 2019-10-01 |
| 23 | Enviar NIP LAN para aprovação | 2019-10-02 A | 2019-10-03 A |  | 0% → 100% | 55d → none |  | baseline start 2019-09-27 → 2019-10-02; baseline finish 2019-09-30 → 2019-10-03 |
| 24 | NIP LAN aprovado | 2019-10-03 A | 2019-10-03 A |  | 0% → 100% | 55d → none |  | baseline start 2019-09-30 → 2019-10-03; baseline finish 2019-09-30 → 2019-10-03 |
| 25 | **TELEFONIA** | 2019-09-25 A | 2019-10-03 A |  | 0% → 100% | 0d → none |  | baseline start 2019-09-23 → 2019-09-25; baseline finish 2019-10-02 → 2019-10-03 |
| 26 | Elaborar o NIP de TELEFONIA | 2019-09-25 A | 2019-10-01 A |  | 0% → 100% | 0d → none |  | baseline start 2019-09-23 → 2019-09-25; baseline finish 2019-09-30 → 2019-10-01 |
| 27 | Enviar NIP TELEFONIA para aprovação | 2019-10-02 A | 2019-10-03 A |  | 0% → 100% | 0d → none |  | baseline start 2019-09-30 → 2019-10-02; baseline finish 2019-10-02 → 2019-10-03 |
| 28 | NIP TELEFONIA aprovado | 2019-10-03 A | 2019-10-03 A |  | 0% → 100% | 0d → none |  | baseline start 2019-10-02 → 2019-10-03; baseline finish 2019-10-02 → 2019-10-03 |
| 29 | **WLAN** | 2019-10-02 → 2019-10-28 A (+26d) | 2019-10-08 → 2019-11-04 (+27d) |  | 0% → 17% | 39.12d → 31.75d |  | baseline start 2019-09-27 → 2019-10-28; baseline finish 2019-10-03 → 2019-11-04 |
| 30 | Elaborar o NIP de WLAN | 2019-10-02 → 2019-10-28 A (+26d) | 2019-10-04 → 2019-10-31 (+27d) |  | 0% → 29% | 39.12d → 31.75d |  | constraint none → start no earlier than 2019-10-28; baseline start 2019-09-27 → 2019-10-28; baseline finish 2019-10-01 → 2019-10-31 |
| 31 | Enviar NIP WLAN para aprovação | 2019-10-07 → 2019-10-31 (+24d) | 2019-10-08 → 2019-11-04 (+27d) |  |  | 39.12d → 31.75d |  | baseline start 2019-10-02 → 2019-10-31; baseline finish 2019-10-03 → 2019-11-04 |
| 32 | NIP WLAN aprovado | 2019-10-08 → 2019-11-04 (+27d) | 2019-10-08 → 2019-11-04 (+27d) |  |  | 39.12d → 31.75d |  | baseline start 2019-10-03 → 2019-11-04; baseline finish 2019-10-03 → 2019-11-04 |
| 33 | **Migração** | 2019-10-02 A | 2019-11-06 → 2019-11-20 (+14d) | 25.88d → 34.88d | 0% → 42% | 1.88d → 22d |  | resources none → *Pedro; Prado; baseline start 2019-09-25 → 2019-10-02; baseline finish 2019-11-05 → 2019-11-20 |
| 34 | Equipamentos LAN entregues | 2019-10-02 A | 2019-10-02 A |  | 0% → 100% | 18.88d → none |  | baseline start 2019-09-25 → 2019-10-02; baseline finish 2019-09-25 → 2019-10-02 |
| 35 | Equipamentos WLAN entregues | 2019-10-02 A | 2019-10-02 A |  | 0% → 100% | 44d → none |  | baseline start 2019-09-25 → 2019-10-02; baseline finish 2019-09-25 → 2019-10-02 |
| 36 | Equipamentos TELEFONIA entregues | 2019-10-02 A | 2019-10-02 A |  | 0% → 100% | 56.88d → none |  | baseline start 2019-09-25 → 2019-10-02; baseline finish 2019-09-25 → 2019-10-02 |
| 37 | **LAN** | 2019-10-02 A | 2019-11-03 → 2019-11-20 (+17d) | 22.88d → 34.88d | 0% → 47% | 18.88d → 22d |  | baseline start 2019-09-25 → 2019-10-02; baseline finish 2019-10-30 → 2019-11-20 |
| 38 | Realizar Staging dos SWs | 2019-10-02 A | 2019-10-11 A |  | 0% → 100% | 18.88d → none |  | baseline start 2019-09-25 → 2019-10-02; baseline finish 2019-10-03 → 2019-10-11 |
| 39 | STAGING SWs realizados | 2019-10-11 A | 2019-10-11 A |  | 0% → 100% | 18.88d → none |  | baseline start 2019-10-03 → 2019-10-11; baseline finish 2019-10-03 → 2019-10-11 |
| 40 | Elaborar GMUD LAN | 2019-10-04 A | 2019-10-09 A |  | 0% → 100% | 18.88d → none |  | baseline finish 2019-10-10 → 2019-10-09 |
| 41 | Enviar GMUD LAN para aprovação | 2019-10-09 A | 2019-10-11 A |  | 0% → 100% | 18.88d → none |  | baseline start 2019-10-11 → 2019-10-09; baseline finish 2019-10-14 → 2019-10-11 |
| 42 | GMUD LAN aprovado | 2019-10-11 A | 2019-10-11 A |  | 0% → 100% | 18.88d → none |  | baseline start 2019-10-14 → 2019-10-11; baseline finish 2019-10-14 → 2019-10-11 |
| 43 | **Instalação de 01 módulo SFP para unificação/redundância dos comutadores e padronização lógica (Qualquer horário)** | 2019-10-11 → 2019-11-19 (+39d) | 2019-10-28 → 2019-11-20 (+23d) | 11d → 1.88d |  | 38.88d → 22d |  | baseline start 2019-10-15 → 2019-11-19; baseline finish 2019-10-17 → 2019-11-20 |
| 44 | Rack Monitoramento | 2019-10-11 → 2019-11-19 (+39d) | 2019-10-14 → 2019-11-19 (+36d) |  |  | 47.88d → 91.88d |  | constraint none → start no earlier than 2019-11-19; baseline start 2019-10-15 → 2019-11-19; baseline finish 2019-10-15 → 2019-11-19 |
| 45 | SGA53 – ETEI | 2019-10-11 → 2019-11-19 (+39d) | 2019-10-14 → 2019-11-19 (+36d) |  |  | 47.88d → 91.88d |  | baseline start 2019-10-15 → 2019-11-19; baseline finish 2019-10-15 → 2019-11-19 |
| 46 | PTG43 – Sala Reunião | 2019-10-11 → 2019-11-19 (+39d) | 2019-10-14 → 2019-11-19 (+36d) |  |  | 47.88d → 91.88d |  | baseline start 2019-10-15 → 2019-11-19; baseline finish 2019-10-15 → 2019-11-19 |
| 47 | PTG42 – Almoxarifado | 2019-10-11 → 2019-11-19 (+39d) | 2019-10-14 → 2019-11-19 (+36d) |  |  | 47.88d → 91.88d |  | baseline start 2019-10-15 → 2019-11-19; baseline finish 2019-10-15 → 2019-11-19 |
| 48 | DFR52 – Refeitório | 2019-10-11 → 2019-11-19 (+39d) | 2019-10-14 → 2019-11-19 (+36d) |  |  | 47.88d → 91.88d |  | baseline start 2019-10-15 → 2019-11-19; baseline finish 2019-10-15 → 2019-11-19 |
| 49 | DFR51 – Exp. Final | 2019-10-11 → 2019-11-19 (+39d) | 2019-10-14 → 2019-11-19 (+36d) |  |  | 47.88d → 91.88d |  | baseline start 2019-10-15 → 2019-11-19; baseline finish 2019-10-15 → 2019-11-19 |
| 50 | DFR49 - Martelos | 2019-10-22 → 2019-11-20 (+29d) | 2019-10-23 → 2019-11-20 (+28d) |  |  | 41.88d → 22d |  | baseline start 2019-10-16 → 2019-11-20; baseline finish 2019-10-16 → 2019-11-20 |
| 51 | ADM08 – Portaria Nova | 2019-10-22 → 2019-11-20 (+29d) | 2019-10-23 → 2019-11-20 (+28d) |  |  | 41.88d → 22d |  | baseline start 2019-10-16 → 2019-11-20; baseline finish 2019-10-16 → 2019-11-20 |
| 52 | SBC13 – Auditório | 2019-10-22 → 2019-11-20 (+29d) | 2019-10-23 → 2019-11-20 (+28d) |  |  | 41.88d → 22d |  | baseline start 2019-10-16 → 2019-11-20; baseline finish 2019-10-16 → 2019-11-20 |
| 53 | SBC14 – Preset | 2019-10-22 → 2019-11-20 (+29d) | 2019-10-23 → 2019-11-20 (+28d) |  |  | 41.88d → 22d |  | baseline start 2019-10-16 → 2019-11-20; baseline finish 2019-10-16 → 2019-11-20 |
| 54 | SBC15 – Preset Calibres | 2019-10-22 → 2019-11-20 (+29d) | 2019-10-23 → 2019-11-20 (+28d) |  |  | 41.88d → 22d |  | baseline start 2019-10-16 → 2019-11-20; baseline finish 2019-10-16 → 2019-11-20 |
| 55 | SBC17 – Reforma | 2019-10-22 → 2019-11-20 (+29d) | 2019-10-23 → 2019-11-20 (+28d) |  |  | 41.88d → 22d |  | baseline start 2019-10-16 → 2019-11-20; baseline finish 2019-10-16 → 2019-11-20 |
| 56 | SBC20 – Lab. Metalúrgico | 2019-10-23 → 2019-11-20 (+28d) | 2019-10-24 → 2019-11-20 (+27d) |  |  | 40.88d → 22d |  | baseline start 2019-10-16 → 2019-11-20; baseline finish 2019-10-16 → 2019-11-20 |
| 57 | SBC23 – Terminal | 2019-10-23 → 2019-11-20 (+28d) | 2019-10-24 → 2019-11-20 (+27d) |  |  | 40.88d → 22d |  | baseline start 2019-10-16 → 2019-11-20; baseline finish 2019-10-16 → 2019-11-20 |
| 58 | SBC24 – Garfos e Flange | 2019-10-23 → 2019-11-20 (+28d) | 2019-10-24 → 2019-11-20 (+27d) |  |  | 40.88d → 22d |  | baseline start 2019-10-16 → 2019-11-20; baseline finish 2019-10-16 → 2019-11-20 |
| 59 | SBC25 – Ponteira | 2019-10-23 → 2019-11-20 (+28d) | 2019-10-24 → 2019-11-20 (+27d) |  |  | 40.88d → 22d |  | baseline start 2019-10-16 → 2019-11-20; baseline finish 2019-10-16 → 2019-11-20 |
| 60 | SBC27 – Finalíssima | 2019-10-23 → 2019-11-20 (+28d) | 2019-10-24 → 2019-11-20 (+27d) |  |  | 40.88d → 22d |  | baseline start 2019-10-17 → 2019-11-20; baseline finish 2019-10-17 → 2019-11-20 |
| 61 | DFA05 – Auditório | 2019-10-23 → 2019-11-20 (+28d) | 2019-10-24 → 2019-11-20 (+27d) |  |  | 40.88d → 22d |  | baseline start 2019-10-17 → 2019-11-20; baseline finish 2019-10-17 → 2019-11-20 |
| 62 | DFR48 - Manutenção | 2019-10-24 → 2019-11-20 (+27d) | 2019-10-25 → 2019-11-20 (+26d) |  |  | 39.88d → 22d |  | baseline start 2019-10-17 → 2019-11-20; baseline finish 2019-10-17 → 2019-11-20 |
| 63 | PTG34 – Auditório PTG | 2019-10-24 → 2019-11-20 (+27d) | 2019-10-25 → 2019-11-20 (+26d) |  |  | 39.88d → 22d |  | baseline start 2019-10-17 → 2019-11-20; baseline finish 2019-10-17 → 2019-11-20 |
| 64 | PTG35 – PCP/Comp. | 2019-10-24 → 2019-11-20 (+27d) | 2019-10-25 → 2019-11-20 (+26d) |  |  | 39.88d → 22d |  | baseline start 2019-10-17 → 2019-11-20; baseline finish 2019-10-17 → 2019-11-20 |
| 65 | PTG36 – Lab. Motores | 2019-10-24 → 2019-11-20 (+27d) | 2019-10-25 → 2019-11-20 (+26d) |  |  | 39.88d → 22d |  | baseline start 2019-10-17 → 2019-11-20; baseline finish 2019-10-17 → 2019-11-20 |
| 66 | PTG44 – Manutenção | 2019-10-24 → 2019-11-20 (+27d) | 2019-10-25 → 2019-11-20 (+26d) |  |  | 39.88d → 22d |  | baseline start 2019-10-17 → 2019-11-20; baseline finish 2019-10-17 → 2019-11-20 |
| 67 | ADM02 – SAM | 2019-10-24 → 2019-11-20 (+27d) | 2019-10-25 → 2019-11-20 (+26d) |  |  | 39.88d → 22d |  | baseline start 2019-10-17 → 2019-11-20; baseline finish 2019-10-17 → 2019-11-20 |
| 68 | GNS54 – Ginásio | 2019-10-25 → 2019-11-20 (+26d) | 2019-10-28 → 2019-11-20 (+23d) |  |  | 38.88d → 22d |  | baseline start 2019-10-17 → 2019-11-20; baseline finish 2019-10-17 → 2019-11-20 |
| 69 | **MTZ46 – Melhorias** | 2019-10-25 → 2019-11-20 (+26d) | 2019-10-25 → 2019-11-20 (+26d) |  |  | 39.67d → 22.8d |  | baseline start 2019-10-30 → 2019-11-20; baseline finish 2019-10-30 → 2019-11-20 |
| 70 | Instalar 02 módulos SFP para unificação/redundância dos comutadores e padronização lógica. | 2019-10-25 → 2019-11-20 (+26d) | 2019-10-25 → 2019-11-20 (+26d) |  |  | 39.67d → 22.8d |  | baseline start 2019-10-30 → 2019-11-20; baseline finish 2019-10-30 → 2019-11-20 |
| 71 | MTZ46 – Sala Qualidade instalado | 2019-10-25 → 2019-11-20 (+26d) | 2019-10-25 → 2019-11-20 (+26d) |  |  | 39.67d → 22.8d |  | was named MTZ47 – Sala Qualidade instalado; baseline start 2019-10-30 → 2019-11-20; baseline finish 2019-10-30 → 2019-11-20 |
| 72 | **Atividades após o horário comercial** | 2019-10-15 → 2019-10-29 A (+14d) | 2019-10-17 → 2019-10-31 A (+14d) | 2.88d → 2.58d | 0% → 100% | 45d → none |  | baseline start 2019-10-28 → 2019-10-29; baseline finish 2019-10-30 → 2019-11-01 |
| 73 | **DFA03 – Refeitório** | 2019-10-15 → 2019-10-29 A (+14d) | 2019-10-15 → 2019-10-29 A (+14d) |  | 0% → 100% | 47d → none |  | baseline start 2019-10-28 → 2019-10-29; baseline finish 2019-10-28 → 2019-10-29 |
| 74 | Substituir o WS-2960-24TC-S p/ WS-2960X-24PS-L e organização lógica; | 2019-10-15 → 2019-10-29 A (+14d) | 2019-10-15 → 2019-10-29 A (+14d) |  | 0% → 100% | 198d → none | 77SS → 42 | constraint none → start no earlier than 2019-10-29; resources none → 2S; baseline start 2019-10-28 → 2019-10-29; baseline finish 2019-10-28 → 2019-10-29 |

| ID | Task | Start | Finish | Duration | Complete | Total float | Predecessors | Other |
| --- | --- | --- | --- | --- | --- | --- | --- | --- |
| 76 | **DFA04 – Compras** | 2019-10-15 → 2019-10-29 A (+14d) | 2019-10-15 → 2019-10-29 A (+14d) | 0.88d → 0.75d | 0% → 100% | 45d → none |  | baseline start 2019-10-28 → 2019-10-29; baseline finish 2019-10-28 → 2019-10-29 |
| 77 | Substituir WS-2960X-48FPS-L por 02x WS-2960X-24PS-L. Instalação de 02 módulos stack e 01 módulo SFP para unificação/redundância dos comutadores e padronização lógica; | 2019-10-15 → 2019-10-29 A (+14d) | 2019-10-15 → 2019-10-29 A (+14d) |  | 0% → 100% | 193.88d → none | 123 → 75 | constraint start no earlier than 2019-10-15 → finish no earlier than 2019-10-29; resources none → 2S; baseline start 2019-10-28 → 2019-10-29; baseline finish 2019-10-28 → 2019-10-29 |
| 79 | **DFA07 – DTI*** | 2019-10-16 → 2019-10-29 A (+13d) | 2019-10-16 → 2019-10-29 A (+13d) | 1d → 0.2d | 0% → 100% | 45d → none |  |  |
| 80 | Instalar 02 módulos stack e 01 módulo SFP para unificação/redundância dos comutadores e padronização lógica; | 2019-10-16 → 2019-10-29 A (+13d) | 2019-10-16 → 2019-10-29 A (+13d) | 1d → 0.2d | 0% → 100% | 45d → none | 77 → 78FF | resources none → 2S |
| 82 | **PTG40 – Eng. Processo** | 2019-10-16 → 2019-10-30 A (+14d) | 2019-10-16 → 2019-10-30 A (+14d) | 1d → 0.5d | 0% → 100% | 45d → none |  | baseline start 2019-10-29 → 2019-10-30; baseline finish 2019-10-29 → 2019-10-30 |
| 83 | Instalar de 02 módulos stack e 01 módulo SFP para unificação/redundância dos comutadores e padronização lógica; | 2019-10-16 → 2019-10-30 A (+14d) | 2019-10-16 → 2019-10-30 A (+14d) | 1d → 0.5d | 0% → 100% | 45d → none | 86SS → 81 | constraint none → must start on 2019-10-30; resources none → 2S; baseline start 2019-10-29 → 2019-10-30; baseline finish 2019-10-29 → 2019-10-30 |
| 85 | **DFA06 – Diretoria** | 2019-10-16 → 2019-10-30 A (+14d) | 2019-10-16 → 2019-10-30 A (+14d) | 1d → 0.5d | 0% → 100% | 45d → none |  | baseline start 2019-10-29 → 2019-10-30; baseline finish 2019-10-29 → 2019-10-30 |
| 86 | Instalar 02 módulos stack e 01 módulo SFP para unificação/redundância dos comutadores e padronização lógica; | 2019-10-16 → 2019-10-30 A (+14d) | 2019-10-16 → 2019-10-30 A (+14d) | 1d → 0.5d | 0% → 100% | 45d → none | 80SS → 84 | constraint none → start no earlier than 2019-10-30; resources none → 2S; baseline start 2019-10-29 → 2019-10-30; baseline finish 2019-10-29 → 2019-10-30 |
| 88 | **PTG32 – Eng. Produtos** | 2019-10-17 → 2019-10-31 A (+14d) | 2019-10-17 → 2019-10-31 A (+14d) | 1d → 0.5d | 0% → 100% | 45d → none |  | baseline start 2019-10-29 → 2019-10-31; baseline finish 2019-10-29 → 2019-11-01 |
| 89 | Instalar de 02 módulos stack e 01 módulo SFP para unificação/redundância dos comutadores e padronização lógica; | 2019-10-17 → 2019-10-31 A (+14d) | 2019-10-17 → 2019-10-31 A (+14d) | 1d → 0.5d | 0% → 100% | 45d → none | 83 → 87 | constraint none → start no earlier than 2019-10-31; resources none → 2S; baseline start 2019-10-29 → 2019-10-31; baseline finish 2019-10-29 → 2019-11-01 |
| 91 | **DFR50 Komatzu** | 2019-10-20 → 2019-10-31 A (+11d) | 2019-10-20 → 2019-10-31 A (+11d) | 0d → 0.5d | 0% → 100% | 13d → none |  | baseline start 2019-10-20 → 2019-10-31; baseline finish 2019-10-20 → 2019-10-31 |
| 92 | Instalar 01x WS-2960X-24PS-L, vindo do rack SOH45, para substituir 01 switch SG-300-28. Instalar 01 módulo SFP para unificação/redundância dos comutadores e padronização lógica; | 2019-10-20 → 2019-10-31 A (+11d) | 2019-10-20 → 2019-10-31 A (+11d) | 1d → 0.5d | 0% → 100% | 53.88d → none | 132SS → 90 | constraint none → start no earlier than 2019-10-30; resources none → 2S; baseline start 2019-10-20 → 2019-10-31; baseline finish 2019-10-20 → 2019-10-31 |
| 93 | DFR50 Komatzu instalado | 2019-10-20 → 2019-10-31 A (+11d) | 2019-10-20 → 2019-10-31 A (+11d) |  | 0% → 100% | 13d → none |  | baseline start 2019-10-20 → 2019-10-31; baseline finish 2019-10-20 → 2019-10-31 |
| 94 | **NKG30 – Sala de Reunião** | 2019-10-17 → 2019-10-31 A (+14d) | 2019-10-17 → 2019-10-31 A (+14d) | 1d → 0.5d | 0% → 100% | 45d → none |  | baseline start 2019-10-30 → 2019-10-31; baseline finish 2019-10-30 → 2019-11-01 |
| 95 | Instalar 01 Instalação switch WS-2960X-24PS-L para atender densidades de portas locais. Instalação de 02 módulos stack e 01 módulo SFP para unificação/redundância dos comutadores e padronização lógica. Remanejamento do Up Link do rack para o Core | 2019-10-17 → 2019-10-31 A (+14d) | 2019-10-17 → 2019-10-31 A (+14d) | 1d → 0.5d | 0% → 100% | 45d → none | 89SS → 93SS | resources none → 2S; baseline start 2019-10-30 → 2019-10-31; baseline finish 2019-10-30 → 2019-11-01 |
| 97 | **Atividades aos Domingos** | 2019-10-13 → 2019-10-20 A (+7d) | 2019-11-03 → 2019-11-10 (+7d) |  | 0% → 79% | 18d → 29d |  | baseline finish 2019-10-27 → 2019-11-10 |
| 98 | **Data Center** | 2019-10-13 → 2019-10-20 A (+7d) | 2019-10-13 → 2019-10-23 (+10d) | 0d → 2.12d | 0% → 99% | 18d → 41.88d |  | baseline finish 2019-10-20 → 2019-10-23 |
| 99 | Instalar 02x WS-3850-24S-S sendo uma delas para substituição de 01 unidade, já existente, do modelo WS-3850-12S. e padronização lógica; | 2019-10-13 → 2019-10-20 A (+7d) | 2019-10-13 → 2019-10-20 A (+7d) |  | 0% → 100% | 74.88d → none |  | was named Instalar 02x WS-3850-24S-S sendo uma delas para substituição de 01 unidade, já existente, do modelo WS-3850-12S. Instalar 21x módulos SFP para unificação/redundância dos comutadores e padronização lógica;; constraint start no earlier than 2019-10-13 → start no earlier than 2019-10-20; resources none → 2S |
| 100 | Data Center instalado | 2019-10-13 → 2019-10-20 A (+7d) | 2019-10-13 → 2019-10-20 A (+7d) |  | 0% → 100% | 18d → none | 99SS → 99 |  |
| 102 | **PTG39 – Reunião Eng.** | 2019-10-20 A | 2019-10-20 A |  | 0% → 100% | 13d → none |  |  |
| 103 | Instala 02x WS-C3850-12S. Instalar 01x WS-2960X-24PS-L substituindo 01 WS-2960-24TC-S. Instalar 02 módulos stack linha 3800 e instalar 02 módulos stack linha 2900. | 2019-10-20 A | 2019-10-20 A | 1d → 0.1d | 0% → 100% | 53.88d → none |  | was named Instala 02x WS-C3850-12S. Instalar 01x WS-2960X-24PS-L substituindo 01 WS-2960-24TC-S. Instalar 02 módulos stack linha 3800 e instalar 02 módulos stack linha 2900. Instalação de 13 módulos SFP; resources none → 2S |
| 104 | PTG39 – Reunião Eng. Instalado | 2019-10-20 A | 2019-10-20 A |  | 0% → 100% | 13d → none |  |  |
| 106 | **SCB11 – Show Room** | 2019-10-27 A | 2019-10-27 A |  | 0% → 100% | 8d → none |  |  |
| 107 | Instalar 01x WS-C3850-12S. Instalar 01 módulo de fibra C3850-NM-4-1GB. Instalar 02 módulos stack linha 3800 e instalação 02 módulos stack linha 2900.Instalar 19 módulos SFP para redundância do ambiente e organização lógica; | 2019-10-27 A | 2019-10-27 A |  | 0% → 100% | 32.88d → none | 93SS → 104 | resources none → 2S |
| 108 | SCB11 – Show Room instalado | 2019-10-27 A | 2019-10-27 A |  | 0% → 100% | 8d → none |  |  |
| 109 | **MTZ47 – Sala Qualidade** | 2019-10-17 → 2019-10-27 A (+10d) | 2019-10-17 → 2019-10-27 A (+10d) | 1d → 0d | 0% → 100% | 45d → none |  | baseline start 2019-10-30 → 2019-10-27; baseline finish 2019-10-30 → 2019-10-27 |
| 110 | Substituir WS-2960X-48FPS-L por 02x WS-2960X-24PS-L. Instalação de 02 módulos stack e 01 módulo SFP para unificação/redundância dos comutadores e padronização lógica; | 2019-10-17 → 2019-10-27 A (+10d) | 2019-10-17 → 2019-10-27 A (+10d) |  | 0% → 100% | 45d → none | 95SS → 104 | constraint none → start no earlier than 2019-10-27; baseline start 2019-10-30 → 2019-10-27; baseline finish 2019-10-30 → 2019-10-27 |
| 112 | **SCB21 – Seg. industrial** | 2019-10-27 → 2019-11-04 A (+8d) | 2019-10-27 → 2019-11-04 A (+8d) | 0d → 1d | 0% → 100% | 8d → none |  | was named SBC21 – Seg. industrial; baseline start 2019-10-27 → 2019-11-04; baseline finish 2019-10-27 → 2019-11-04 |
| 113 | Instalar 02 módulos stack e 02 módulos SFP para unificação/redundância dos comutadores e padronização lógica. Remanejamento do Up Link do rack SBC27, sendo essa localidade um dos pontos de distribuição da rede; | 2019-10-27 → 2019-11-04 A (+8d) | 2019-10-27 → 2019-11-04 A (+8d) |  | 0% → 100% | 32.88d → none |  | constraint none → start no earlier than 2019-11-03; resources none → 2S; baseline start 2019-10-27 → 2019-11-04; baseline finish 2019-10-27 → 2019-11-04 |
| 114 | SBC21 – Seg. industrial instalado | 2019-10-27 → 2019-11-04 A (+8d) | 2019-10-27 → 2019-11-04 A (+8d) |  | 0% → 100% | 8d → none |  | baseline start 2019-10-27 → 2019-11-04; baseline finish 2019-10-27 → 2019-11-04 |
| 115 | **PTG41 – Fábrica** | 2019-10-20 → 2019-11-10 A (+21d) | 2019-10-20 → 2019-11-10 A (+21d) |  | 0% → 100% | 13d → none |  | baseline start 2019-10-20 → 2019-11-10; baseline finish 2019-10-20 → 2019-11-10 |
| 116 | Substituir 01 switch 3Com por 01 unidade do WS-2960X-24PS-L. Instalar 02 módulos stack e 01 módulo SFP para unificação/redundância dos comutadores e padronização lógica; | 2019-10-20 → 2019-11-10 A (+21d) | 2019-10-20 → 2019-11-10 A (+21d) | 1d → 0.5d | 0% → 100% | 53.88d → none | 104SS → 123 | constraint none → start no earlier than 2019-11-10; resources none → 2S; baseline start 2019-10-20 → 2019-11-10; baseline finish 2019-10-20 → 2019-11-10 |
| 117 | PTG41 – Fábrica instalado | 2019-10-20 → 2019-11-10 A (+21d) | 2019-10-20 → 2019-11-10 A (+21d) |  | 0% → 100% | 44d → none |  | baseline start 2019-10-20 → 2019-11-10; baseline finish 2019-10-20 → 2019-11-10 |
| 118 | **SCB28 – U.M. Deslizantes** | 2019-10-27 → 2019-11-04 (+8d) | 2019-10-27 → 2019-11-04 (+8d) | 0d → 1d |  | 8d → 33d |  | was named SBC28 – U.M. Deslizantes; baseline start 2019-10-27 → 2019-11-04; baseline finish 2019-10-27 → 2019-11-04 |
| 119 | Substituir 01x WS-2960X-48FPS-L por 02 unidades do WS-2960X-24PS-L. Instalar 02 módulos stack e 01 módulo SFP para unificação/redundância dos comutadores e padronização lógica; | 2019-10-27 → 2019-11-04 (+8d) | 2019-10-27 → 2019-11-04 (+8d) |  |  | 32.88d → 138d |  | constraint none → start no earlier than 2019-11-03; resources none → 2S; baseline start 2019-10-27 → 2019-11-04; baseline finish 2019-10-27 → 2019-11-04 |
| 120 | SBC28 – U.M. Deslizantes instalado | 2019-10-27 → 2019-11-04 (+8d) | 2019-10-27 → 2019-11-04 (+8d) |  |  | 32.88d → 144.32d |  | baseline start 2019-10-27 → 2019-11-04; baseline finish 2019-10-27 → 2019-11-04 |
| 121 | **ADM01 – PABX** | 2019-10-13 → 2019-11-10 A (+28d) | 2019-10-13 → 2019-11-10 A (+28d) |  | 0% → 100% | 47d → none |  | baseline start 2019-10-27 → 2019-11-10; baseline finish 2019-10-27 → 2019-11-10 |
| 122 | Instalar 02 módulos stack para unificação/redundância dos comutadores e padronização lógica; | 2019-10-13 → 2019-11-10 A (+28d) | 2019-10-13 → 2019-11-10 A (+28d) |  | 0% → 100% | 199.88d → none | 99SS → 99 | constraint none → start no earlier than 2019-11-10; baseline start 2019-10-27 → 2019-11-10; baseline finish 2019-10-27 → 2019-11-10 |
| 123 | ADM01 – PABX instalado | 2019-10-13 → 2019-11-10 A (+28d) | 2019-10-13 → 2019-11-10 A (+28d) |  | 0% → 100% | 47d → none |  | baseline start 2019-10-27 → 2019-11-10; baseline finish 2019-10-27 → 2019-11-10 |
| 124 | **SCB18 – Mezanino** | 2019-11-03 → 2019-11-06 A (+3d) | 2019-11-03 → 2019-11-06 A (+3d) | 0d → 0.88d | 0% → 100% | 3d → none |  | was named SBC18 – Mezanino; baseline start 2019-10-27 → 2019-11-04; baseline finish 2019-10-27 → 2019-11-04 |
| 125 | Instalar 02 módulos stack e 01 módulo SFP para unificação/redundância dos comutadores e padronização lógica; | 2019-11-03 → 2019-11-06 A (+3d) | 2019-11-03 → 2019-11-06 A (+3d) |  | 0% → 100% | 11.88d → none |  | constraint start no earlier than 2019-11-03 → start no earlier than 2019-11-06; baseline start 2019-10-27 → 2019-11-04; baseline finish 2019-10-27 → 2019-11-04 |
| 126 | SCB18 – Mezanino instalado | 2019-11-03 → 2019-11-06 A (+3d) | 2019-11-03 → 2019-11-06 A (+3d) |  | 0% → 100% | 3d → none |  | was named SBC18 – Mezanino instalado; baseline start 2019-10-27 → 2019-11-04; baseline finish 2019-10-27 → 2019-11-04 |
| 127 | **SCB19 – Eng. Processos** | 2019-11-03 → 2019-11-10 A (+7d) | 2019-11-03 → 2019-11-10 A (+7d) |  | 0% → 100% | 3d → none |  | was named SBC19 – Eng. Processos; baseline start 2019-10-27 → 2019-11-10; baseline finish 2019-10-27 → 2019-11-10 |
| 128 | Instalar 02 módulos stack e 01 módulo SFP para unificação/redundância dos comutadores e padronização lógica; | 2019-11-03 → 2019-11-10 A (+7d) | 2019-11-03 → 2019-11-10 A (+7d) |  | 0% → 100% | 11.88d → none |  | constraint none → must start on 2019-11-10; baseline start 2019-10-27 → 2019-11-10; baseline finish 2019-10-27 → 2019-11-10 |
| 129 | SBC19 – Eng. Processos instalado | 2019-11-03 → 2019-11-10 A (+7d) | 2019-11-03 → 2019-11-10 A (+7d) |  | 0% → 100% | 3d → none |  | baseline start 2019-10-27 → 2019-11-10; baseline finish 2019-10-27 → 2019-11-10 |
| 130 | **SOH45 – Eng. Produto** | 2019-10-20 → 2019-11-10 (+21d) | 2019-10-20 → 2019-11-10 (+21d) |  |  | 13d → 1.12d |  | baseline start 2019-10-20 → 2019-11-10; baseline finish 2019-10-20 → 2019-11-10 |
| 131 | Instalar 02x WS-C3850-12S. Instalar 01x WS-2960X-24PS-L substituindo 01 switch WS-2960-24TS-S. Instalar 02 módulos stack linha 3800 e 02 módulos stack linha 2900. Instalação de 05 módulos SFP | 2019-10-20 → 2019-11-10 (+21d) | 2019-10-20 → 2019-11-10 (+21d) |  |  | 53.88d → 6d |  | constraint none → start no earlier than 2019-11-10; baseline start 2019-10-20 → 2019-11-10; baseline finish 2019-10-20 → 2019-11-10 |
| 132 | SOH45 – Eng. Produto instalado | 2019-10-20 → 2019-11-10 (+21d) | 2019-10-20 → 2019-11-10 (+21d) |  |  | 13d → 1.12d |  | baseline start 2019-10-20 → 2019-11-10; baseline finish 2019-10-20 → 2019-11-10 |
| 133 | Migração LAN realizada | 2019-11-03 → 2019-11-10 (+7d) | 2019-11-03 → 2019-11-10 (+7d) |  |  | 3d → 1.12d | 129 → 132 | baseline start 2019-10-30 → 2019-11-10; baseline finish 2019-10-30 → 2019-11-10 |
| 134 | **WLAN** | 2019-10-09 → 2019-11-04 (+26d) | 2019-10-27 → 2019-11-10 (+14d) | 13d → 4.88d |  | 39d → 29d |  | baseline start 2019-10-04 → 2019-11-04; baseline finish 2019-10-27 → 2019-11-10 |
| 135 | Realizar Staging dos Aps | 2019-10-09 → 2019-11-04 (+26d) | 2019-10-14 → 2019-11-04 (+21d) | 4d → 1d |  | 39.12d → 132.88d |  | baseline start 2019-10-04 → 2019-11-04; baseline finish 2019-10-09 → 2019-11-04 |
| 136 | STAGING APs realizado | 2019-10-14 → 2019-11-04 (+21d) | 2019-10-14 → 2019-11-04 (+21d) |  |  | 39.12d → 31d |  | baseline start 2019-10-09 → 2019-11-04; baseline finish 2019-10-09 → 2019-11-04 |
| 137 | Entregar Aps para equipe de INFRA instalar | 2019-10-15 → 2019-11-04 (+20d) | 2019-10-15 → 2019-11-05 (+21d) |  |  | 39.12d → 132.88d |  | baseline start 2019-10-10 → 2019-11-04; baseline finish 2019-10-10 → 2019-11-05 |
| 138 | Elaborar GMUD WLAN | 2019-10-16 → 2019-11-05 (+20d) | 2019-10-22 → 2019-11-05 (+14d) | 5d → 1d |  | 39.12d → 31d |  | baseline start 2019-10-11 → 2019-11-05; baseline finish 2019-10-17 → 2019-11-05 |
| 139 | Enviar GMUD WLAN para aprovação | 2019-10-23 → 2019-11-06 (+14d) | 2019-10-24 → 2019-11-06 (+13d) | 2d → 1d |  | 39.12d → 31d |  | baseline start 2019-10-18 → 2019-11-06; baseline finish 2019-10-21 → 2019-11-06 |
| 140 | GMUD WLAN aprovado | 2019-10-24 → 2019-11-06 (+13d) | 2019-10-24 → 2019-11-06 (+13d) |  |  | 39.12d → 31d |  | baseline start 2019-10-21 → 2019-11-06; baseline finish 2019-10-21 → 2019-11-06 |
| 141 | Realizar a atualização da WLC | 2019-10-27 → 2019-11-10 (+14d) | 2019-10-27 → 2019-11-10 (+14d) |  |  | 162d → 125.2d |  | constraint start no earlier than 2019-10-27 → start no earlier than 2019-11-10; baseline start 2019-10-27 → 2019-11-10; baseline finish 2019-10-27 → 2019-11-10 |
| 142 | Atualização WLC realizada | 2019-10-27 → 2019-11-10 (+14d) | 2019-10-27 → 2019-11-10 (+14d) |  |  | 39d → 29d |  | baseline start 2019-10-27 → 2019-11-10; baseline finish 2019-10-27 → 2019-11-10 |
| 143 | **TELEFONIA** | 2019-10-04 → 2019-10-24 A (+20d) | 2019-11-06 → 2019-11-14 (+8d) | 24d → 15d | 0% → 40% |  |  | baseline start 2019-10-02 → 2019-10-24; baseline finish 2019-11-05 → 2019-11-14 |
| 144 | Realizar o Staging de TELEFONIA | 2019-10-04 → 2019-10-24 A (+20d) | 2019-10-07 → 2019-10-28 A (+21d) |  | 0% → 100% | 0d → none |  | constraint none → start no earlier than 2019-10-24; baseline start 2019-10-02 → 2019-10-24; baseline finish 2019-10-04 → 2019-10-28 |
| 145 | STAGING GW realizados | 2019-10-07 → 2019-10-28 A (+21d) | 2019-10-07 → 2019-10-28 A (+21d) |  | 0% → 100% | 0d → none |  | baseline start 2019-10-04 → 2019-10-28; baseline finish 2019-10-04 → 2019-10-28 |
| 146 | Elaborar GMUD TELEFONIA | 2019-10-08 → 2019-10-28 A (+20d) | 2019-10-14 → 2019-10-30 A (+16d) | 5d → 2d | 0% → 100% | 0d → none |  | baseline start 2019-10-04 → 2019-10-28; baseline finish 2019-10-11 → 2019-10-30 |
| 147 | Enviar GMUD TELEFONIA para aprovação | 2019-10-15 → 2019-10-30 A (+15d) | 2019-10-16 → 2019-11-01 A (+16d) |  | 0% → 100% | 0d → none |  | baseline start 2019-10-11 → 2019-10-30; baseline finish 2019-10-15 → 2019-11-01 |
| 148 | GMUD TELEFONIA aprovado | 2019-10-16 → 2019-11-01 A (+16d) | 2019-10-16 → 2019-11-01 A (+16d) |  | 0% → 100% | 0d → none |  | baseline start 2019-10-15 → 2019-11-01; baseline finish 2019-10-15 → 2019-11-01 |
| 149 | Realizar a migração TELEFONIA | 2019-10-17 → 2019-11-01 (+15d) | 2019-11-06 → 2019-11-14 (+8d) | 15d → 9d |  |  |  | baseline start 2019-10-15 → 2019-11-01; baseline finish 2019-11-05 → 2019-11-14 |
| 150 | Migração TELEFONIA realizada | 2019-11-06 → 2019-11-14 (+8d) | 2019-11-06 → 2019-11-14 (+8d) |  |  |  |  | baseline start 2019-11-05 → 2019-11-14; baseline finish 2019-11-05 → 2019-11-14 |
| 151 | **Documentação** | 2019-11-04 → 2019-11-11 (+7d) | 2019-11-20 → 2019-11-22 (+2d) | 12d → 8.12d |  | 3d → 1.12d |  | resources none → Marília Dalila; baseline start 2019-10-31 → 2019-11-11; baseline finish 2019-11-19 → 2019-11-22 |
| 152 | **TELEFONIA** | 2019-11-07 → 2019-11-14 (+7d) | 2019-11-20 → 2019-11-22 (+2d) | 9d → 5d |  |  |  | baseline start 2019-11-05 → 2019-11-14; baseline finish 2019-11-19 → 2019-11-22 |
| 153 | Preparar o AS-BUILT TELEFONIA | 2019-11-07 → 2019-11-14 (+7d) | 2019-11-13 → 2019-11-20 (+7d) | 5d → 3d |  |  |  | baseline start 2019-11-05 → 2019-11-14; baseline finish 2019-11-12 → 2019-11-20 |
| 154 | Enviar o AS-BUILT TELEFONIA para aprovação | 2019-11-14 → 2019-11-20 (+6d) | 2019-11-18 → 2019-11-21 (+3d) | 2d → 1d |  |  |  | baseline start 2019-11-12 → 2019-11-20; baseline finish 2019-11-14 → 2019-11-21 |

| ID | Task | Start | Finish | Duration | Total float | Other |
| --- | --- | --- | --- | --- | --- | --- |
| 155 | AS-BUILT TELEFONIA aprovado | 2019-11-18 → 2019-11-21 (+3d) | 2019-11-18 → 2019-11-21 (+3d) |  |  | baseline start 2019-11-14 → 2019-11-21; baseline finish 2019-11-14 → 2019-11-21 |
| 156 | Traduzir AS-BUILT TELEFONIA para inglês | 2019-11-19 → 2019-11-21 (+2d) | 2019-11-20 → 2019-11-22 (+2d) | 2d → 1d | 22d → 20.88d | baseline start 2019-11-14 → 2019-11-21; baseline finish 2019-11-19 → 2019-11-22 |
| 157 | AS-BUILT inglês aprovado | 2019-11-20 → 2019-11-22 (+2d) | 2019-11-20 → 2019-11-22 (+2d) |  | 22d → 20.88d | baseline start 2019-11-19 → 2019-11-22; baseline finish 2019-11-19 → 2019-11-22 |
| 158 | **LAN** | 2019-11-04 → 2019-11-11 (+7d) | 2019-11-11 → 2019-11-18 (+7d) | 6d → 5d | 3d → 1.12d | baseline start 2019-10-31 → 2019-11-11; baseline finish 2019-11-07 → 2019-11-18 |
| 159 | Preparar o AS-BUILT LAN | 2019-11-04 → 2019-11-11 (+7d) | 2019-11-06 → 2019-11-13 (+7d) |  | 3d → 1.12d | baseline start 2019-10-31 → 2019-11-11; baseline finish 2019-11-04 → 2019-11-13 |
| 160 | Enviar AS-BUILT LAN | 2019-11-07 → 2019-11-14 (+7d) | 2019-11-07 → 2019-11-14 (+7d) |  | 6d → 3.12d | baseline start 2019-11-05 → 2019-11-14; baseline finish 2019-11-05 → 2019-11-14 |
| 161 | AS-BUILT LAN aprovado | 2019-11-07 → 2019-11-14 (+7d) | 2019-11-07 → 2019-11-14 (+7d) |  | 6d → 3.12d | baseline start 2019-11-05 → 2019-11-14; baseline finish 2019-11-05 → 2019-11-14 |
| 162 | Traduzir o AS-BUILT para inglês | 2019-11-08 → 2019-11-18 (+10d) | 2019-11-11 → 2019-11-18 (+7d) | 2d → 1d | 28d → 24d | baseline start 2019-11-06 → 2019-11-18; baseline finish 2019-11-07 → 2019-11-18 |
| 163 | AS-BUILT LAN inglês aprovado | 2019-11-11 → 2019-11-18 (+7d) | 2019-11-11 → 2019-11-18 (+7d) |  | 28d → 24d | baseline start 2019-11-07 → 2019-11-18; baseline finish 2019-11-07 → 2019-11-18 |
| 164 | **WLAN** | 2019-11-07 → 2019-11-14 (+7d) | 2019-11-14 → 2019-11-20 (+6d) | 6d → 4d | 3d → 1.12d | baseline start 2019-11-05 → 2019-11-14; baseline finish 2019-11-12 → 2019-11-20 |
| 165 | Preparar o AS-BUILT WLAN | 2019-11-07 → 2019-11-14 (+7d) | 2019-11-11 → 2019-11-18 (+7d) | 3d → 2d | 3d → 1.12d | baseline start 2019-11-05 → 2019-11-14; baseline finish 2019-11-07 → 2019-11-18 |
| 166 | Enviar AS-BUILT WLAN | 2019-11-12 → 2019-11-19 (+7d) | 2019-11-12 → 2019-11-19 (+7d) |  | 3d → 1.12d | baseline start 2019-11-08 → 2019-11-19; baseline finish 2019-11-08 → 2019-11-19 |
| 167 | AS-BUILT WLAN aprovado | 2019-11-12 → 2019-11-19 (+7d) | 2019-11-12 → 2019-11-19 (+7d) |  | 3d → 1.12d | baseline start 2019-11-08 → 2019-11-19; baseline finish 2019-11-08 → 2019-11-19 |
| 168 | Traduzir o AS-BUILT WLAN para inglês | 2019-11-13 → 2019-11-20 (+7d) | 2019-11-14 → 2019-11-20 (+6d) | 2d → 1d | 25d → 22d | baseline start 2019-11-11 → 2019-11-20; baseline finish 2019-11-12 → 2019-11-20 |
| 169 | AS-BUILT WLAN inglês aprovado | 2019-11-14 → 2019-11-20 (+6d) | 2019-11-14 → 2019-11-20 (+6d) |  | 25d → 22d | baseline start 2019-11-12 → 2019-11-20; baseline finish 2019-11-12 → 2019-11-20 |
| 170 | Documentação finalizada | 2019-11-20 → 2019-11-22 (+2d) | 2019-11-20 → 2019-11-22 (+2d) |  | 22d → 20.88d | baseline start 2019-11-19 → 2019-11-22; baseline finish 2019-11-19 → 2019-11-22 |
| 171 | **Encerramento do Projeto** | 2019-11-19 → 2019-11-21 (+2d) | 2019-12-20 → 2019-12-22 (+2d) | 24d → 21.88d |  | resources none → *Pedro; MAgno; Prado; Robson; Silva; baseline start 2019-11-14 → 2019-11-21; baseline finish 2020-01-09 → 2019-12-22 |
| 172 | Enviar Termo de Aceite final | 2019-11-19 → 2019-11-21 (+2d) | 2019-11-19 → 2019-11-21 (+2d) | 1d → 0.5d |  | baseline start 2019-11-14 → 2019-11-21; baseline finish 2019-11-18 → 2019-11-21 |
| 173 | Aprovar Termo de Aceite Final | 2019-11-20 → 2019-11-21 (+1d) | 2019-11-20 → 2019-11-21 (+1d) | 0.5d → 0.2d |  | baseline start 2019-11-18 → 2019-11-21; baseline finish 2019-11-25 → 2019-11-21 |
| 174 | Termo de aceite entregue e aceito | 2019-11-20 → 2019-11-21 (+1d) | 2019-11-20 → 2019-11-21 (+1d) |  |  | baseline start 2019-11-25 → 2019-11-21; baseline finish 2019-11-25 → 2019-11-21 |
| 175 | Faturar o Projeto | 2019-11-20 → 2019-11-21 (+1d) | 2019-11-20 → 2019-11-22 (+2d) |  |  | baseline start 2019-11-25 → 2019-11-21; baseline finish 2019-11-26 → 2019-11-22 |
| 176 | Projeto faturado | 2019-11-20 → 2019-11-22 (+2d) | 2019-11-20 → 2019-11-22 (+2d) |  |  | baseline start 2019-11-26 → 2019-11-22; baseline finish 2019-11-26 → 2019-11-22 |
| 177 | Projeto TMP encerrado | 2019-11-20 → 2019-11-22 (+2d) | 2019-11-20 → 2019-11-22 (+2d) |  | 22d → 20.68d | baseline start 2019-11-26 → 2019-11-22; baseline finish 2019-11-26 → 2019-11-22 |
| 178 | Pagamento realizado | 2019-12-20 → 2019-12-22 (+2d) | 2019-12-20 → 2019-12-22 (+2d) |  |  | baseline start 2020-01-09 → 2019-12-22; baseline finish 2020-01-09 → 2019-12-22 |
